# PM Project

Schedule from MS Project, 2022-01-04 to 2022-03-16, costs in $, A marks actual dates.

## Calendars

- Standard: Mon-Thu 10:00-18:00; Fri-Sat off; Sun 10:00-18:00. Exceptions (off unless hours are given): 2022-01-07 (Coptic Christmas), 2022-01-25 (January Revolution), 2022-01-28 (National Police Day Holiday).

## Resources

| Resource | Group | Rate | Cost per use |
| --- | --- | --- | --- |
| Software Engineer | IV Team | 90 |  |
| Web Design | Design Team | 50 |  |
| Back-end dev | Dev Team | 70 |  |
| Graphics Tablet | Materials | 100 | 133.39 |
| AWS |  |  |  |
| Front-end dev | Dev Team | 60 |  |
| Testing Engineer | Test Team | 40 |  |
| DevOps Engineer |  | 50 |  |

## Schedule

| ID | WBS | Task | Type | Duration | Start | Finish | Predecessors | Complete | Remaining | Baseline start | Baseline finish | Baseline duration | Total slack | Free slack | Resources | Work | Actual work | Cost | Baseline cost | Actual cost |
| --- | --- | --- | --- | --- | --- | --- | --- | --- | --- | --- | --- | --- | --- | --- | --- | --- | --- | --- | --- | --- |
| 1 | 1 | **E-Commerce System** |  | 50.54d | 2022-01-04 A | 2022-03-16 |  | 16% | 42.28d | 2022-01-04 | 2022-03-15 | 49.67d | 0d |  |  | 571h | 87h | 37,643.39 | 37,013.39 | 7,963.39 |
| 2 | 1.1 | **Planning** |  | 15.88d | 2022-01-04 A | 2022-01-26 |  | 84% | 2.47d | 2022-01-04 | 2022-01-24 | 15d | -0.88d | 0d |  | 103h | 87h | 9,270 | 8,640 | 7,830 |
| 3 | 1.1.1 | **Requirement Gathering** |  | 12.88d | 2022-01-04 A | 2022-01-20 A |  | 100% |  | 2022-01-04 | 2022-01-19 | 12d |  |  |  | 87h | 87h | 7,830 | 7,200 | 7,830 |
| 4 | 1.1.1.1 | **Customer Module** |  | 12.88d | 2022-01-04 A | 2022-01-20 A |  | 100% |  | 2022-01-04 | 2022-01-19 | 12d |  |  |  | 87h | 87h | 7,830 | 7,200 | 7,830 |
| 5 | 1.1.1.1.1 | Interview |  | 3.88d | 2022-01-04 A | 2022-01-10 A |  | 100% |  | 2022-01-04 | 2022-01-10 | 4d |  |  | Software Engineer | 31h | 31h | 2,790 | 2,880 | 2,790 |
| 6 | 1.1.1.1.2 | Requirement Specific |  | 7d | 2022-01-10 A | 2022-01-20 A | 5 | 100% |  | 2022-01-11 | 2022-01-19 | 6d |  |  | Software Engineer | 56h | 56h | 5,040 | 4,320 | 5,040 |
| 7 | 1.1.2 | **Fesibilty Study** |  | 3.88d | 2022-01-20 A | 2022-01-26 |  |  | 3.88d | 2022-01-20 | 2022-01-24 | 3d | -0.88d | 0d |  | 16h |  | 1,440 | 1,440 |  |
| 8 | 1.1.2.1 | Gantt Chart |  | 2d | 2022-01-20 A | 2022-01-26 | 3 |  | 2d | 2022-01-20 | 2022-01-24 | 2d | -0.88d | 0d | Software Engineer | 16h |  | 1,440 | 1,440 |  |
| 9 | 1.1.2.2 | Milestone1 | milestone | 0d | 2022-01-26 | 2022-01-26 | 8 |  |  | 2022-01-24 | 2022-01-24 |  | -0.88d | 0d | Software Engineer |  |  |  |  |  |
| 10 | 1.2 | **Design** |  | 27.54d | 2022-01-26 A | 2022-03-06 | 2 |  | 27.54d | 2022-01-26 | 2022-03-03 | 26.67d | 0d |  |  | 356h |  | 22,373.39 | 22,373.39 | 133.39 |
| 11 | 1.2.1 | **UI/UX Deign** |  | 20.54d | 2022-01-26 A | 2022-02-23 |  |  | 20.54d | 2022-01-26 | 2022-02-22 | 19.67d | 7d |  |  | 264h |  | 16,053.39 | 16,053.39 | 133.39 |
| 12 | 1.2.1.1 | Adobe XD |  | 2.67d | 2022-01-26 A | 2022-01-31 |  |  | 2.67d | 2022-01-26 | 2022-01-30 | 2.67d | 0d |  | Web Design [150%]; Graphics Tablet [400%]; Front-end dev [50%] | 40h |  | 2,613.39 | 2,613.39 | 133.39 |
| 13 | 1.2.1.2 | Milestone2 | milestone | 0d | 2022-01-31 | 2022-01-31 | 12 |  |  | 2022-01-30 | 2022-01-30 |  | 24d |  | Front-end dev [50%] |  |  |  |  |  |
| 14 | 1.2.1.3 | Front-end |  | 17d | 2022-01-31 | 2022-02-23 | 12 |  |  | 2022-01-30 | 2022-02-22 | 17d | 0d |  | Front-end dev [200%] | 224h |  | 13,440 | 13,440 |  |
| 15 | 1.2.2 | Back-end Design |  | 4w | 2022-01-31 | 2022-03-06 | 14SS |  |  | 2022-01-30 | 2022-03-03 | 4w | 0d |  | Back-end dev [50%] | 80h |  | 5,600 | 5,600 |  |
| 16 | 1.2.3 | UMLS |  | 3d | 2022-03-01 | 2022-03-06 | 15FF |  |  | 2022-02-28 | 2022-03-03 | 3d | 0d |  | Front-end dev [50%] | 12h |  | 720 | 720 |  |
| 17 | 1.3 | **Testing** |  | 5d | 2022-03-06 | 2022-03-13 | 10 |  |  | 2022-03-03 | 2022-03-10 | 5d | 0d |  |  | 80h |  | 4,400 | 4,400 |  |
| 18 | 1.3.1 | UAT |  | 4d | 2022-03-06 | 2022-03-13 |  |  |  | 2022-03-03 | 2022-03-10 | 4d | 0d |  | Testing Engineer | 32h |  | 1,280 | 1,280 |  |
| 19 | 1.3.2 | TCW |  | 3d | 2022-03-06 | 2022-03-10 |  |  |  | 2022-03-03 | 2022-03-09 | 3d | 1d |  | Software Engineer; Testing Engineer | 48h |  | 3,120 | 3,120 |  |
| 20 | 1.4 | **Deployment** |  | 3d | 2022-03-13 | 2022-03-16 | 17 |  |  | 2022-03-10 | 2022-03-15 | 3d | 0d |  |  | 32h |  | 1,600 | 1,600 |  |
| 21 | 1.4.1 | Upload DB |  | 2d | 2022-03-13 | 2022-03-16 |  |  |  | 2022-03-10 | 2022-03-15 | 2d | 0d |  | AWS [0.1%]; DevOps Engineer | 16h |  | 800 | 800 |  |
| 22 | 1.4.2 | Upload Site |  | 2d | 2022-03-13 | 2022-03-16 |  |  |  | 2022-03-10 | 2022-03-15 | 2d | 0d |  | AWS [0.1%]; DevOps Engineer | 16h |  | 800 | 800 |  |
